Schedule from MS Project, 2018-03-15 to 2018-06-26, costs in €, A marks actual dates.

## Calendars

- Estándar: Mon-Fri 09:00-13:00, 15:00-19:00; Sat-Sun off. Exceptions (off unless hours are given): 2018-03-19 (Festivo), 2018-03-29 to 2018-03-30 (Festivo), 2018-05-01 (Festivo).

## Resources

| Resource | Rate | Cost per use | Notes |
| --- | --- | --- | --- |
| Analista | 25 |  |  |
| Diseñador | 25 |  |  |
| Tester | 25 |  |  |
| Programador | 25 |  |  |
| Jefe de proyecto | 30 |  |  |
| Cliente |  |  |  |
| Asesoramiento Legal |  | 3000 | Asesoramiento profesional de abogados |
| Director | 30 |  |  |
| Servidor |  | 1000 | Objeto servidor |
| Instalaciones |  | 50 | Instalaciones usadas para las reuniones de la empresa |

## Schedule

| ID | WBS | Task | Type | Duration | Start | Finish | Predecessors | Complete | Baseline start | Baseline finish | Baseline duration | Resources | Work | Actual work | Cost | Baseline cost | Actual cost |
| --- | --- | --- | --- | --- | --- | --- | --- | --- | --- | --- | --- | --- | --- | --- | --- | --- | --- |
| 1 | 1 | **Inicio** |  | 9.38d | 2018-03-15 A | 2018-04-02 A |  | 100% | 2018-03-15 | 2018-04-02 | 9.38d |  | 173.8h | 173.8h | 7,524 | 7,500 | 7,524 |
| 2 | 1.1 | **Obtención de requisitos** |  | 1.25d | 2018-03-15 A | 2018-03-16 A |  | 100% | 2018-03-15 | 2018-03-16 | 1.25d |  | 52.8h | 52.8h | 4,214 | 4,190 | 4,214 |
| 3 | 1.1.1 | Programar reunión |  | 0.1d | 2018-03-15 A | 2018-03-15 A |  | 100% | 2018-03-15 | 2018-03-15 | 0d | Jefe de proyecto | 0.8h | 0.8h | 24 |  | 24 |
| 4 | 1.1.2 | Realizar reunión |  | 8h | 2018-03-15 A | 2018-03-15 A | 3 | 100% | 2018-03-15 | 2018-03-15 | 8h | Analista; Cliente; Diseñador; Jefe de proyecto; Programador; Director; Instalaciones | 48h | 48h | 1,130 | 1,130 | 1,130 |
| 5 | 1.1.3 | Aceptar requisitos |  | 2h | 2018-03-16 A | 2018-03-16 A | 4 | 100% | 2018-03-16 | 2018-03-16 | 2h | Cliente; Jefe de proyecto; Asesoramiento Legal | 4h | 4h | 3,060 | 3,060 | 3,060 |
| 6 | 1.2 | Definir alcance |  | 5h | 2018-03-16 A | 2018-03-16 A | 3SS | 100% | 2018-03-16 | 2018-03-16 | 5h | Analista; Jefe de proyecto | 5h | 5h | 140 | 140 | 140 |
| 7 | 1.3 | Definir casos de uso |  | 6h | 2018-03-16 A | 2018-03-16 A | 5 | 100% | 2018-03-16 | 2018-03-16 | 6h | Analista | 6h | 6h | 150 | 150 | 150 |
| 8 | 1.4 | **Realizar plan de tiempo** |  | 2.25d | 2018-03-20 A | 2018-03-22 A | 7 | 100% | 2018-03-20 | 2018-03-22 | 2.25d |  | 28h | 28h | 750 | 750 | 750 |
| 9 | 1.4.1 | Planificar la gestión de tiempos |  | 4h | 2018-03-20 A | 2018-03-20 A | 7 | 100% | 2018-03-20 | 2018-03-20 | 4h | Analista; Jefe de proyecto | 8h | 8h | 220 | 220 | 220 |
| 10 | 1.4.2 | Establecer la Secuencia de Actividades |  | 2h | 2018-03-20 A | 2018-03-20 A | 9 | 100% | 2018-03-20 | 2018-03-20 | 2h | Analista; Jefe de proyecto | 4h | 4h | 110 | 110 | 110 |
| 11 | 1.4.3 | Estimar la duración de las actividades |  | 4h | 2018-03-20 A | 2018-03-21 A | 10 | 100% | 2018-03-20 | 2018-03-21 | 4h | Analista; Jefe de proyecto | 8h | 8h | 220 | 220 | 220 |
| 12 | 1.4.4 | Desarrollar cronograma |  | 8h | 2018-03-21 A | 2018-03-22 A | 11 | 100% | 2018-03-21 | 2018-03-22 | 8h | Analista | 8h | 8h | 200 | 200 | 200 |
| 13 | 1.5 | Realizar plan de recursos |  | 5h | 2018-03-22 A | 2018-03-22 A | 12 | 100% | 2018-03-22 | 2018-03-22 | 5h | Analista; Jefe de proyecto | 10h | 10h | 275 | 275 | 275 |
| 14 | 1.6 | Realizar plan de configuración |  | 8h | 2018-03-22 A | 2018-03-23 A | 13 | 100% | 2018-03-22 | 2018-03-23 | 8h | Analista; Jefe de proyecto | 16h | 16h | 440 | 440 | 440 |
| 15 | 1.7 | Realizar plan inicial del desarrollo |  | 9h | 2018-03-23 A | 2018-03-26 A | 14, 6 | 100% | 2018-03-23 | 2018-03-26 | 9h | Analista; Jefe de proyecto | 18h | 18h | 495 | 495 | 495 |
| 16 | 1.8 | Realizar plan de desarrollo del proyecto |  | 2d | 2018-03-27 A | 2018-03-28 A | 15 | 100% | 2018-03-27 | 2018-03-28 | 2d | Analista; Jefe de proyecto | 32h | 32h | 880 | 880 | 880 |
| 17 | 1.9 | Aceptación plan de desarrollo |  | 3h | 2018-04-02 A | 2018-04-02 A | 16 | 100% | 2018-04-02 | 2018-04-02 | 3h | Jefe de proyecto; Director | 6h | 6h | 180 | 180 | 180 |
| 18 | 2 | <Fin planifiación> | milestone | 0d | 2018-04-02 A | 2018-04-02 A | 17 | 100% | 2018-04-02 | 2018-04-02 | 0d |  |  |  |  |  |  |
| 19 | 3 | **Elaboración** |  | 9.12d | 2018-04-02 A | 2018-04-13 A | 18 | 100% | 2018-04-02 | 2018-04-13 | 9.12d |  | 156h | 156h | 5,060 | 5,060 | 5,060 |
| 20 | 3.1 | Definir arquitectura del sistema |  | 4h | 2018-04-02 A | 2018-04-02 A | 18 | 100% | 2018-04-02 | 2018-04-02 | 4h | Analista; Diseñador; Programador | 12h | 12h | 300 | 300 | 300 |
| 21 | 3.2 | **Definir arquitectura Servidor** |  | 1d | 2018-04-02 A | 2018-04-03 A | 20 | 100% | 2018-04-02 | 2018-04-03 | 1d |  | 18h | 18h | 1,550 | 1,550 | 1,550 |
| 22 | 3.2.1 | Buscar proveedores del sistema servidor |  | 6h | 2018-04-02 A | 2018-04-03 A | 20 | 100% | 2018-04-02 | 2018-04-03 | 6h | Jefe de proyecto; Analista | 12h | 12h | 330 | 330 | 330 |
| 23 | 3.2.2 | Eleccion del proveedor |  | 2h | 2018-04-03 A | 2018-04-03 A | 22 | 100% | 2018-04-03 | 2018-04-03 | 2h | Director; Jefe de proyecto; Analista; Servidor; Instalaciones | 6h | 6h | 1,220 | 1,220 | 1,220 |
| 24 | 3.3 | **Definir arquitectura Cliente** |  | 0.5d | 2018-04-03 A | 2018-04-04 A | 23 | 100% | 2018-04-03 | 2018-04-04 | 0.5d |  | 12h | 12h | 320 | 320 | 320 |
| 25 | 3.3.1 | Definir plataforma de aplicación |  | 4h | 2018-04-03 A | 2018-04-04 A | 23 | 100% | 2018-04-03 | 2018-04-04 | 4h | Analista; Jefe de proyecto; Programador | 12h | 12h | 320 | 320 | 320 |
| 26 | 3.4 | Definir la línea base |  | 1d | 2018-04-04 A | 2018-04-05 A | 25, 23 | 100% | 2018-04-04 | 2018-04-05 | 1d | Analista; Jefe de proyecto | 16h | 16h | 440 | 440 | 440 |

Notes:
- 3: Se programara una reunión con los usuarios para obtener los requisitos que definiran el sistema
- 4: Se realiza la reunion con los interesados
- 5: Se aceptan los requisitos definidos en la reunion que se usaran como linea base del sistema
- 6: Definición del alcance del proyecto y los objetivos a realizar
- 7: Con los requisitos obtenemos los casos de uso
- 13: Necesario tener el cronograma
- 15: Realizamos la primera planificación del sistema, con los casos de uso definidos y lo recursos necesarios
- 16: Definos tos el plan de proyecto, segun la planificación y los recursos
- 17: Se acepta el plan de desarrollo del proyecto
- 20: Definición de la arquitectura del sistema
- 22: Se busca un grupo de posibles candidtatos a proporcionar el sistema servidor
- 23: Selección del proveedor mediante una reunion con el mismo
- 25: Se define para que plataforma se debe desarrollar la apliación y las limitaciones que tendra
- 26: Se deine la línea base en función de: / -El plan de proyecto / -Arquitectura

| ID | WBS | Task | Type | Duration | Start | Finish | Predecessors | Complete | Baseline start | Baseline finish | Baseline duration | Total slack | Resources | Work | Actual work | Cost | Baseline cost | Actual cost |
| --- | --- | --- | --- | --- | --- | --- | --- | --- | --- | --- | --- | --- | --- | --- | --- | --- | --- | --- |
| 27 | 3.5 | **Diseño** |  | 6.12d | 2018-04-05 A | 2018-04-13 A | 26 | 100% | 2018-04-05 | 2018-04-13 | 6.12d |  |  | 98h | 98h | 2,450 | 2,450 | 2,450 |
| 28 | 3.5.1 | Diagramas de caso de uso |  | 15h | 2018-04-05 A | 2018-04-09 A | 26 | 100% | 2018-04-05 | 2018-04-09 | 15h |  | Analista; Diseñador | 30h | 30h | 750 | 750 | 750 |
| 29 | 3.5.2 | Diagramas de clase |  | 18h | 2018-04-09 A | 2018-04-11 A | 28 | 100% | 2018-04-09 | 2018-04-11 | 18h |  | Analista; Diseñador | 36h | 36h | 900 | 900 | 900 |
| 30 | 3.5.3 | Definir grupos funcionales |  | 16h | 2018-04-11 A | 2018-04-13 A | 28 | 100% | 2018-04-11 | 2018-04-13 | 16h |  | Analista; Diseñador | 32h | 32h | 800 | 800 | 800 |
| 31 | 4 | <Fin elaboración> | milestone | 0d | 2018-04-13 | 2018-04-13 | 30, 29 |  | 2018-04-13 | 2018-04-13 | 0d | 0d |  |  |  |  |  |  |
| 32 | 5 | **Construcción** |  | 37.5d | 2018-04-16 | 2018-06-07 | 31 |  | 2018-04-16 | 2018-06-07 | 37.5d | 0d |  | 552h |  | 13,800 | 13,800 |  |
| 33 | 5.1 | **Primera iteración** |  | 6d | 2018-04-16 | 2018-04-24 | 31 |  | 2018-04-16 | 2018-04-24 | 6d | 0d |  | 64h |  | 1,600 | 1,600 |  |
| 34 | 5.1.1 | **Grupo funcional 1** |  | 6d | 2018-04-16 | 2018-04-24 | 31 |  | 2018-04-16 | 2018-04-24 | 6d | 0d |  | 64h |  | 1,600 | 1,600 |  |
| 35 | 5.1.1.1 | Repoducir música |  | 6d | 2018-04-16 | 2018-04-24 | 31FS+1d |  | 2018-04-16 | 2018-04-24 | 6d | 0d | Diseñador; Programador | 64h |  | 1,600 | 1,600 |  |
| 36 | 5.2 | **Segunda iteración** |  | 3.5d | 2018-04-24 | 2018-04-27 | 35 |  | 2018-04-24 | 2018-04-27 | 3.5d | 0d |  | 56h |  | 1,400 | 1,400 |  |
| 37 | 5.2.1 | **Grupo funcional 3** |  | 3.5d | 2018-04-24 | 2018-04-27 | 35 |  | 2018-04-24 | 2018-04-27 | 3.5d | 0d |  | 56h |  | 1,400 | 1,400 |  |
| 38 | 5.2.1.1 | Adquisición música |  | 3.5d | 2018-04-24 | 2018-04-27 | 35 |  | 2018-04-24 | 2018-04-27 | 3.5d | 0d | Diseñador; Programador | 56h |  | 1,400 | 1,400 |  |
| 39 | 5.3 | **Tercera iteración** |  | 3d | 2018-04-30 | 2018-05-03 | 38 |  | 2018-04-30 | 2018-05-03 | 3d | 0d |  | 48h |  | 1,200 | 1,200 |  |
| 40 | 5.3.1 | Buscar Musica |  | 3d | 2018-04-30 | 2018-05-03 | 38 |  | 2018-04-30 | 2018-05-03 | 3d | 0d | Diseñador; Programador | 48h |  | 1,200 | 1,200 |  |
| 41 | 5.4 | **Cuarta iteración** |  | 8d | 2018-05-04 | 2018-05-15 | 40 |  | 2018-05-04 | 2018-05-15 | 8d | 0d |  | 128h |  | 3,200 | 3,200 |  |
| 42 | 5.4.1 | **Grupo funcional 1** |  | 8d | 2018-05-04 | 2018-05-15 | 40 |  | 2018-05-04 | 2018-05-15 | 8d | 0d |  | 128h |  | 3,200 | 3,200 |  |
| 43 | 5.4.1.1 | Añadir musica |  | 5d | 2018-05-04 | 2018-05-10 | 40 |  | 2018-05-04 | 2018-05-10 | 5d | 0d | Diseñador; Programador | 80h |  | 2,000 | 2,000 |  |
| 44 | 5.4.1.2 | Modificar música |  | 2d | 2018-05-11 | 2018-05-14 | 43 |  | 2018-05-11 | 2018-05-14 | 2d | 0d | Diseñador; Programador | 32h |  | 800 | 800 |  |
| 45 | 5.4.1.3 | Eliminar música |  | 1d | 2018-05-15 | 2018-05-15 | 44 |  | 2018-05-15 | 2018-05-15 | 1d | 0d | Diseñador; Programador | 16h |  | 400 | 400 |  |
| 46 | 5.5 | **Quinta iteración** |  | 6d | 2018-05-16 | 2018-05-23 | 45 |  | 2018-05-16 | 2018-05-23 | 6d | 0d |  | 80h |  | 2,000 | 2,000 |  |
| 47 | 5.5.1 | **Grupo funcional 2** |  | 6d | 2018-05-16 | 2018-05-23 | 45 |  | 2018-05-16 | 2018-05-23 | 6d | 0d |  | 80h |  | 2,000 | 2,000 |  |
| 48 | 5.5.1.1 | Creación usuario |  | 2d | 2018-05-16 | 2018-05-17 | 45 |  | 2018-05-16 | 2018-05-17 | 2d | 0d | Diseñador; Programador | 32h |  | 800 | 800 |  |
| 49 | 5.5.1.2 | LogIn |  | 3d | 2018-05-21 | 2018-05-23 | 48FS+1d |  | 2018-05-21 | 2018-05-23 | 3d | 0d | Diseñador; Programador | 48h |  | 1,200 | 1,200 |  |
| 50 | 5.6 | **Sexta interación** |  | 3d | 2018-05-24 | 2018-05-28 | 49 |  | 2018-05-24 | 2018-05-28 | 3d | 0d |  | 48h |  | 1,200 | 1,200 |  |
| 51 | 5.6.1 | Eliminación usuario |  | 3d | 2018-05-24 | 2018-05-28 | 49 |  | 2018-05-24 | 2018-05-28 | 3d | 0d | Diseñador; Programador | 48h |  | 1,200 | 1,200 |  |

Notes:
- 28: Obtenemos los casos de uso del sistema
- 29: Obtenermos las clases que tendra nuestro sistema
- 30: Definiremos una grupo funcional como los casos de uso de parte cliente y servidor que se realizaran de de manera conjunta

| ID | WBS | Task | Type | Duration | Start | Finish | Predecessors | Baseline start | Baseline finish | Baseline duration | Total slack | Resources | Work | Cost | Baseline cost |
| --- | --- | --- | --- | --- | --- | --- | --- | --- | --- | --- | --- | --- | --- | --- | --- |
| 52 | 5.7 | **Septima iteración** |  | 4d | 2018-05-29 | 2018-06-01 | 51 | 2018-05-29 | 2018-06-01 | 4d | 0d |  | 64h | 1,600 | 1,600 |
| 53 | 5.7.1 | Enviar mensajes |  | 4d | 2018-05-29 | 2018-06-01 | 51 | 2018-05-29 | 2018-06-01 | 4d | 0d | Diseñador; Programador | 64h | 1,600 | 1,600 |
| 54 | 5.8 | **Octava iteración** |  | 4d | 2018-06-04 | 2018-06-07 | 53 | 2018-06-04 | 2018-06-07 | 4d | 0d |  | 64h | 1,600 | 1,600 |
| 55 | 5.8.1 | Borrar y modificar listas |  | 4d | 2018-06-04 | 2018-06-07 | 53 | 2018-06-04 | 2018-06-07 | 4d | 0d | Diseñador; Programador | 64h | 1,600 | 1,600 |
| 56 | 6 | <Fin construcción> | milestone | 0d | 2018-06-07 | 2018-06-07 | 55 | 2018-06-07 | 2018-06-07 | 0d | 0d |  |  |  |  |
| 57 | 7 | **Transición** |  | 12.39d | 2018-06-08 | 2018-06-26 | 56 | 2018-06-08 | 2018-06-26 | 12.38d | 0d |  | 128.1h | 3,338 | 3,335 |
| 58 | 7.1 | **Plan de pruebas** |  | 8.25d | 2018-06-08 | 2018-06-20 | 56 | 2018-06-08 | 2018-06-20 | 8.25d | 0d |  | 35h | 875 | 875 |
| 59 | 7.1.1 | Definir plan de pruebas |  | 5h | 2018-06-08 | 2018-06-14 | 56 | 2018-06-08 | 2018-06-14 | 5h | 0d | Analista | 5h | 125 | 125 |
| 60 | 7.1.2 | Realizar las pruebas |  | 20h | 2018-06-14 | 2018-06-19 | 59 | 2018-06-14 | 2018-06-19 | 20h | 0d | Tester | 20h | 500 | 500 |
| 61 | 7.1.3 | Documentar las pruebas |  | 10h | 2018-06-19 | 2018-06-20 | 60 | 2018-06-19 | 2018-06-20 | 10h | 0d | Tester | 10h | 250 | 250 |
| 62 | 7.2 | Definir plan de mantenimiento |  | 15h | 2018-06-08 | 2018-06-11 | 56 | 2018-06-08 | 2018-06-11 | 15h | 6.62d | Analista; Jefe de proyecto | 25h | 700 | 700 |
| 63 | 7.3 | Realizar manual de usuario |  | 10h | 2018-06-08 | 2018-06-13 | 56 | 2018-06-08 | 2018-06-13 | 10h | 4.62d | Analista | 10h | 250 | 250 |
| 64 | 7.4 | **Entrega del proyecto** |  | 2.01d | 2018-06-20 | 2018-06-22 | 61, 62, 63 | 2018-06-20 | 2018-06-22 | 2d | 0d |  | 38.1h | 913 | 910 |
| 65 | 7.4.1 | Programar reunión |  | 0.1h | 2018-06-20 | 2018-06-20 | 62, 63, 61 | 2018-06-20 | 2018-06-20 | 0d | 0d | Jefe de proyecto | 0.1h | 3 |  |
| 66 | 7.4.2 | Entrega del proyecto |  | 6h | 2018-06-20 | 2018-06-21 | 65 | 2018-06-20 | 2018-06-21 | 6h | 0d | Cliente; Director; Jefe de proyecto; Instalaciones | 18h | 410 | 410 |
| 67 | 7.4.3 | Puesta en marcha del sistema |  | 10h | 2018-06-21 | 2018-06-22 | 66 | 2018-06-21 | 2018-06-22 | 10h | 0d | Programador; Tester | 20h | 500 | 500 |
| 68 | 7.5 | Redactar acta de cierre |  | 20h | 2018-06-21 | 2018-06-26 | 67FS-5h | 2018-06-21 | 2018-06-26 | 20h | 0d | Jefe de proyecto | 20h | 600 | 600 |
| 69 | 8 | <Fin transición> | milestone | 0d | 2018-06-26 | 2018-06-26 | 68 | 2018-06-26 | 2018-06-26 | 0d | 0d |  |  |  |  |

Notes:
- 59: Definición de las pruebas que se realizarán al sistema
- 60: Realización de las pruebas descritas
- 61: Documentación de las pruebas realizadas
- 62: Definición del plan de mantenimiento del sistema
- 63: Creación del manual de usuario de la aplicación
- 65: Se concertará una reunión con los clientes
- 66: Entrega del proyecto, junto con el manual de usuario y el plan de mantenimiento
- 67: Instalación del sistema
- 68: Redacta el documento de cierre del proyecto
